# DDL_Project_Schedule_v1.0_EN

Schedule from MS Project, 2016-01-08 to 2016-04-28.

## Calendars

- Standard: Mon-Fri 08:00-12:00, 13:00-17:00; Sat-Sun off.

## Resources

| Resource |
| --- |
| TEAM |
| DuongDT |
| PhuocNH |
| DevTeam |
| KienNT |
| HiepTQ |
| MaiNTX |
| TestTEAM |

## Schedule

| ID | WBS | Task | Type | Duration | Start | Finish | Predecessors | Total slack | Free slack | Constraint | Resources | Work |
| --- | --- | --- | --- | --- | --- | --- | --- | --- | --- | --- | --- | --- |
| 1 | 1 | **Outsourcing (OHRM)** |  | 80d? | 2016-01-08 | 2016-04-28 |  |  |  |  |  | 1936h |
| 2 | 1.1 | **Initiation** |  | 12d? | 2016-01-08 | 2016-01-25 |  | 0d |  |  |  | 388h |
| 3 | 1.1.1 | Form up team roles |  | 0.5d | 2016-01-08 | 2016-01-08 |  | 0d |  |  | TEAM | 4h |
| 4 | 1.1.2 | Select project idea |  | 0.5d | 2016-01-08 | 2016-01-08 | 3 | 0d |  |  | TEAM | 4h |
| 5 | 1.1.3 | **Develop project idea** |  | 1d | 2016-01-11 | 2016-01-11 | 4 | 0d |  |  |  | 8h |
| 6 | 1.1.3.1 | Define project scope |  | 0.5d | 2016-01-11 | 2016-01-11 |  | 0d |  |  | TEAM | 4h |
| 7 | 1.1.3.2 | Define project features |  | 0.5d | 2016-01-11 | 2016-01-11 | 6 | 0d |  |  | TEAM | 4h |
| 8 | 1.1.4 | Kick-off meeting |  | 1d? | 2016-01-12 | 2016-01-12 | 5 | 0d |  |  | TEAM | 8h |
| 9 | 1.1.5 | **Environment** |  | 2d? | 2016-01-13 | 2016-01-14 | 8 | 0d |  |  |  | 16h |
| 10 | 1.1.5.1 | Create guideline to install and use tools & environments |  | 0.5d? | 2016-01-13 | 2016-01-13 |  | 0d |  |  | KienNT | 4h |
| 11 | 1.1.5.2 | **Install tools & environments** |  | 1d | 2016-01-13 | 2016-01-14 | 10 | 0d |  |  |  | 8h |
| 12 | 1.1.5.2.1 | Install TortoiseGit |  | 0.5h | 2016-01-13 | 2016-01-13 |  | 0d |  |  | TEAM | 0.5h |
| 13 | 1.1.5.2.2 | Install Visual Studio 2013 |  | 3h | 2016-01-13 | 2016-01-13 | 12 | 0d |  |  | TEAM | 3h |
| 14 | 1.1.5.2.3 | Install Microsoft SQL Server 2010 |  | 2h | 2016-01-13 | 2016-01-14 | 13 | 0d |  |  | TEAM | 2h |
| 15 | 1.1.5.2.4 | Install Microsoft Project 2013 |  | 2h | 2016-01-14 | 2016-01-14 | 14 | 0d |  |  | TEAM | 2h |
| 16 | 1.1.5.2.5 | Install Sublime Text |  | 0.5h | 2016-01-14 | 2016-01-14 | 15 | 0d |  |  | TEAM | 0.5h |
| 17 | 1.1.5.3 | Trainning using tools & environments |  | 0.5d | 2016-01-14 | 2016-01-14 | 11 | 0d |  |  | TEAM | 4h |
| 18 | 1.1.6 | **Technology Research (Part 1)** |  | 7d | 2016-01-15 | 2016-01-25 | 9 | 0d |  |  |  | 152h |
| 19 | 1.1.6.1 | Study Java & MVC |  | 7d | 2016-01-15 | 2016-01-25 |  | 0d |  | start no earlier than 2015-09-14 | DevTeam | 56h |
| 20 | 1.1.6.2 | Study Jquery & Bootstrap |  | 7d | 2016-01-15 | 2016-01-25 |  | 0d |  |  | DevTeam | 56h |
| 21 | 1.1.6.3 | Study Bootstraps, HTML5 & CSS3 |  | 5d | 2016-01-15 | 2016-01-21 |  | 2d |  |  | KienNT | 40h |
| 22 | 1.1.7 | SRS/PP Review checklist |  | 0.5d? | 2016-01-13 | 2016-01-13 | 8 | 0d |  |  |  |  |
| 23 | 1.1.8 | **Project Introduction** |  | 3d | 2016-01-13 | 2016-01-18 | 22 | 2d | 0d |  |  | 28h |
| 24 | 1.1.8.1 | Create Project Introduction |  | 2d | 2016-01-13 | 2016-01-15 |  | 2d | 0d |  |  | 16h |
| 25 | 1.1.8.2 | Review Project Introduction |  | 0.5d | 2016-01-15 | 2016-01-15 | 24 | 2d | 0d |  | HiepTQ | 8h |
| 26 | 1.1.8.3 | Update Project Introduction |  | 0.5d | 2016-01-18 | 2016-01-18 | 25 | 2d | 0d |  |  | 4h |
| 27 | 1.1.8.4 | Complete Project Introduction | milestone | 0d | 2016-01-18 | 2016-01-18 | 26 | 2d |  |  |  |  |

| ID | WBS | Task | Type | Duration | Start | Finish | Predecessors | Total slack | Free slack | Resources | Work |
| --- | --- | --- | --- | --- | --- | --- | --- | --- | --- | --- | --- |
| 28 | 1.1.9 | **Project Plan** |  | 8d? | 2016-01-13 | 2016-01-25 | 22 | 0d |  |  | 96h |
| 29 | 1.1.9.1 | Create Project Plan in MS Word |  | 3d | 2016-01-13 | 2016-01-18 |  | 0d |  | DuongDT | 24h |
| 30 | 1.1.9.2 | Create Project Schedule in .mmp file |  | 3d | 2016-01-18 | 2016-01-21 | 29 | 0d |  | DuongDT | 24h |
| 31 | 1.1.9.3 | Create CM Plan |  | 2d | 2016-01-13 | 2016-01-15 |  | 4d |  | HiepTQ | 16h |
| 32 | 1.1.9.4 | Review Project Plan, CMPlan, Schedule |  | 1d | 2016-01-21 | 2016-01-22 | 31, 30 | 0d |  | DuongDT; HiepTQ | 16h |
| 33 | 1.1.9.5 | Update Project Plan, CMPlan, Schedule |  | 1d? | 2016-01-22 | 2016-01-25 | 32 | 0d |  | HiepTQ; DuongDT | 16h |
| 34 | 1.1.9.6 | Complete Project Plan | milestone | 0d | 2016-01-22 | 2016-01-22 | 32 | 1d |  |  |  |
| 35 | 1.1.10 | **User Requirement Specification** |  | 3d? | 2016-01-18 | 2016-01-21 | 23 | 2d |  |  | 40h |
| 36 | 1.1.10.1 | Create User Requirement Sepecification |  | 2d | 2016-01-18 | 2016-01-20 |  | 2d | 0d | PhuocNH; MaiNTX | 32h |
| 37 | 1.1.10.2 | Review User Requirement Specification |  | 0.5d? | 2016-01-20 | 2016-01-20 | 36 | 2d | 0d |  | 4h |
| 38 | 1.1.10.3 | Update User Requirement Specification |  | 0.5d? | 2016-01-21 | 2016-01-21 | 37 | 2d | 0d | PhuocNH | 4h |
| 39 | 1.1.10.4 | Complete User Requirement Specification | milestone | 0d | 2016-01-21 | 2016-01-21 | 38 | 2d |  |  |  |
| 40 | 1.1.11 | **Q&A Sheet** |  | 3.5d? | 2016-01-13 | 2016-01-18 | 22 | 4.5d |  |  | 28h |
| 41 | 1.1.11.1 | Create Q&A sheet |  | 2d | 2016-01-13 | 2016-01-15 |  | 4.5d | 0d |  | 16h |
| 42 | 1.1.11.2 | Review Q&A sheet |  | 0.5d? | 2016-01-15 | 2016-01-15 | 41 | 4.5d | 0d |  | 4h |
| 43 | 1.1.11.3 | Translate Q&A sheet to Japanese |  | 1d | 2016-01-18 | 2016-01-18 | 42 | 4.5d |  | HiepTQ | 8h |
| 44 | 1.1.12 | Create progress report 1 |  | 0.5d | 2016-01-25 | 2016-01-25 | 23, 28, 35, 40 | 0d |  | MaiNTX | 4h |
| 45 | 1.1.13 | Submit progress report 1 | milestone | 0d | 2016-01-25 | 2016-01-25 | 44 | 0d |  | MaiNTX |  |
| 46 | 1.2 | **Solution** |  | 26d? | 2016-01-26 | 2016-03-01 | 2 | 0d |  |  | 596h |
| 47 | 1.2.1 | **Technology Research (Part 2)** |  | 3d? | 2016-01-26 | 2016-01-28 |  | 0d |  |  | 56h |
| 48 | 1.2.1.1 | Code first migration |  | 2d | 2016-01-26 | 2016-01-27 |  | 2d | 1d | DuongDT | 16h |
| 49 | 1.2.1.2 | Restful API on .net MVC |  | 3d | 2016-01-26 | 2016-01-28 |  | 0d |  |  | 24h |
| 50 | 1.2.1.3 | Payment by BaoKim API |  | 1d? | 2016-01-26 | 2016-01-26 |  | 0d |  |  | 8h |
| 51 | 1.2.1.4 | Facebook Login API |  | 1d? | 2016-01-27 | 2016-01-27 | 50 | 0d |  |  | 8h |

| ID | WBS | Task | Type | Duration | Start | Finish | Predecessors | Total slack | Free slack | Resources | Work |
| --- | --- | --- | --- | --- | --- | --- | --- | --- | --- | --- | --- |
| 52 | 1.2.2 | **Demo & Prototypes** |  | 9d | 2016-01-26 | 2016-02-05 |  | 17d |  |  | 128h |
| 53 | 1.2.2.1 | Create Demo |  | 7d | 2016-01-26 | 2016-02-03 |  | 19d |  | DevTeam | 56h |
| 54 | 1.2.2.2 | Create Prototype |  | 9d | 2016-01-26 | 2016-02-05 |  | 17d |  | KienNT | 72h |
| 55 | 1.2.3 | **Software Requirement Specification** |  | 4d | 2016-01-26 | 2016-01-29 |  | 8d | 0d |  | 64h |
| 56 | 1.2.3.1 | **Non-functional Requirements Specification** |  | 2d | 2016-01-26 | 2016-01-27 |  | 8d | 0d |  | 32h |
| 57 | 1.2.3.1.1 | Define Security Requirements |  | 1d | 2016-01-26 | 2016-01-26 |  | 9d |  | HiepTQ | 8h |
| 58 | 1.2.3.1.2 | Define Performane Requirements |  | 1d | 2016-01-26 | 2016-01-26 |  | 9d |  | MaiNTX | 8h |
| 59 | 1.2.3.1.3 | Define User-interface Requirements |  | 2d | 2016-01-26 | 2016-01-27 |  | 8d |  | PhuocNH | 16h |
| 60 | 1.2.3.2 | **Functional Requirements Specification** |  | 2d | 2016-01-28 | 2016-01-29 | 56 | 8d |  |  | 32h |
| 61 | 1.2.3.2.1 | Define User Client Module functional Requirements |  | 2d | 2016-01-28 | 2016-01-29 |  | 8d |  | PhuocNH | 16h |
| 62 | 1.2.3.2.2 | Define Admin Module functional Requirments |  | 2d | 2016-01-28 | 2016-01-29 |  | 8d |  | MaiNTX | 16h |
| 63 | 1.2.4 | **System Design** |  | 16d? | 2016-01-28 | 2016-02-18 |  | 0d |  |  | 284h |
| 64 | 1.2.4.1 | Create design review checklist |  | 1d? | 2016-01-28 | 2016-01-28 | 51 | 0d |  |  | 8h |
| 65 | 1.2.4.2 | **Architectural Design** |  | 9d? | 2016-01-29 | 2016-02-10 | 64 | 0d |  |  | 80h |
| 66 | 1.2.4.2.1 | Define architectural design |  | 1d | 2016-01-29 | 2016-01-29 | 48 | 1d |  | DuongDT | 8h |
| 67 | 1.2.4.2.2 | Define system features |  | 2d | 2016-01-29 | 2016-02-01 | 49 | 0d |  |  | 16h |
| 68 | 1.2.4.2.3 | Study and choose suitable architectural design |  | 2d | 2016-02-02 | 2016-02-03 | 67, 66 | 0d |  | DevTeam | 16h |
| 69 | 1.2.4.2.4 | Create Architectural design |  | 3d | 2016-02-04 | 2016-02-08 | 68 | 0d |  | DuongDT | 24h |
| 70 | 1.2.4.2.5 | Review architectural design |  | 1d | 2016-02-09 | 2016-02-09 | 69 | 0d |  | TEAM | 8h |
| 71 | 1.2.4.2.6 | Update Architectural Design |  | 1d? | 2016-02-10 | 2016-02-10 | 70 | 0d |  | DuongDT | 8h |
| 72 | 1.2.4.2.7 | Complete Architectural Design version 1.0 | milestone | 0d | 2016-02-09 | 2016-02-09 | 70 | 1d |  |  |  |
| 73 | 1.2.4.3 | **Screen design** |  | 9d? | 2016-02-01 | 2016-02-11 | 55 | 13d |  |  | 112h |
| 74 | 1.2.4.3.1 | Create screen flow document |  | 2d | 2016-02-01 | 2016-02-02 |  | 13d | 0d | KienNT | 16h |
| 75 | 1.2.4.3.2 | Create client screen design |  | 5d | 2016-02-03 | 2016-02-09 | 74 | 13d | 0d | MaiNTX | 40h |
| 76 | 1.2.4.3.3 | Create admin screen design |  | 5d | 2016-02-03 | 2016-02-09 | 74 | 13d | 0d | HiepTQ | 40h |
| 77 | 1.2.4.3.4 | Review screen design |  | 1d? | 2016-02-10 | 2016-02-10 | 76, 75 | 13d | 0d | PhuocNH | 8h |
| 78 | 1.2.4.3.5 | Update screen design |  | 1d? | 2016-02-11 | 2016-02-11 | 77 | 13d | 0d | KienNT | 8h |
| 79 | 1.2.4.3.6 | Complete screen design | milestone | 0d | 2016-02-11 | 2016-02-11 | 78 | 13d |  |  |  |

| ID | WBS | Task | Type | Duration | Start | Finish | Predecessors | Total slack | Free slack | Resources | Work |
| --- | --- | --- | --- | --- | --- | --- | --- | --- | --- | --- | --- |
| 80 | 1.2.4.4 | **Database design** |  | 4.5d? | 2016-02-01 | 2016-02-05 | 55 | 17.5d |  |  | 36h |
| 81 | 1.2.4.4.1 | Create database design |  | 3d | 2016-02-01 | 2016-02-03 |  | 17.5d | 0d |  | 24h |
| 82 | 1.2.4.4.2 | Review database design |  | 0.5d? | 2016-02-04 | 2016-02-04 | 81 | 17.5d | 0d | TEAM | 4h |
| 83 | 1.2.4.4.3 | Update database design |  | 1d | 2016-02-04 | 2016-02-05 | 82 | 17.5d | 0d |  | 8h |
| 84 | 1.2.4.4.4 | Complete database design | milestone | 0d | 2016-02-05 | 2016-02-05 | 83 | 17.5d |  |  |  |
| 85 | 1.2.4.5 | **Class/Component Design** |  | 6d? | 2016-02-11 | 2016-02-18 | 65, 55 | 0d |  |  | 48h |
| 86 | 1.2.4.5.1 | Define Class and Component |  | 1d | 2016-02-11 | 2016-02-11 |  | 0d |  |  | 8h |
| 87 | 1.2.4.5.2 | Create Class/component design |  | 3d | 2016-02-12 | 2016-02-16 | 86 | 0d |  | DevTeam | 24h |
| 88 | 1.2.4.5.3 | Review Class/component design |  | 1d? | 2016-02-17 | 2016-02-17 | 87 | 0d |  | DuongDT | 8h |
| 89 | 1.2.4.5.4 | Update Class/component design |  | 1d? | 2016-02-18 | 2016-02-18 | 88 | 0d |  | DevTeam | 8h |
| 90 | 1.2.4.5.5 | Complete Class/component design | milestone | 0d | 2016-02-18 | 2016-02-18 | 89 | 0d |  |  |  |
| 91 | 1.2.5 | Create progress report 2 |  | 1d | 2016-02-19 | 2016-02-19 | 85 | 0d |  | MaiNTX | 8h |
| 92 | 1.2.6 | Submit progress report 2 | milestone | 0d | 2016-02-19 | 2016-02-19 | 91 | 0d |  | MaiNTX |  |
| 93 | 1.2.7 | **Testing** |  | 6d? | 2016-02-22 | 2016-02-29 | 92 | 0d |  |  | 48h |
| 94 | 1.2.7.1 | Create test plan/case checklists |  | 1d | 2016-02-22 | 2016-02-22 |  | 0d |  | HiepTQ | 8h |
| 95 | 1.2.7.2 | Create test plan |  | 3d | 2016-02-23 | 2016-02-25 | 94 | 0d |  | TestTEAM | 24h |
| 96 | 1.2.7.3 | Review test plan |  | 1d | 2016-02-26 | 2016-02-26 | 95 | 0d |  | HiepTQ | 8h |
| 97 | 1.2.7.4 | Update test plan |  | 1d? | 2016-02-29 | 2016-02-29 | 96 | 0d |  | TestTEAM | 8h |
| 98 | 1.2.7.5 | Test plan complete | milestone | 0d | 2016-02-29 | 2016-02-29 | 97 | 0d |  |  |  |
| 99 | 1.2.8 | Create progress report 3 |  | 1d? | 2016-03-01 | 2016-03-01 | 93 | 0d |  | MaiNTX | 8h |
| 100 | 1.2.9 | Submit progress report 3 | milestone | 0d | 2016-03-01 | 2016-03-01 | 99 | 0d |  | MaiNTX |  |
| 101 | 1.3 | **Construction** |  | 31d? | 2016-03-02 | 2016-04-13 | 46 | 0d |  |  | 768h |
| 102 | 1.3.1 | **Define Coding Standards** |  | 1d? | 2016-03-02 | 2016-03-02 |  | 0d |  |  | 16h |
| 103 | 1.3.1.1 | Create Coding Convention |  | 1d? | 2016-03-02 | 2016-03-02 |  | 8d | 0d | DuongDT | 8h |
| 104 | 1.3.1.2 | Create Code & UT Test review checklist |  | 1d? | 2016-03-02 | 2016-03-02 |  | 0d |  | HiepTQ | 8h |

| ID | WBS | Task | Type | Duration | Start | Finish | Predecessors | Total slack | Free slack | Resources | Work |
| --- | --- | --- | --- | --- | --- | --- | --- | --- | --- | --- | --- |
| 105 | 1.3.2 | **Screen Design** |  | 2d | 2016-03-02 | 2016-03-03 |  | 10d | 2d |  | 16h |
| 106 | 1.3.2.1 | Refine screen design document and prototype |  | 2d | 2016-03-02 | 2016-03-03 |  | 10d |  | TEAM | 16h |
| 107 | 1.3.3 | **Coding & Unit test** |  | 18d | 2016-03-03 | 2016-03-28 |  | 8d | 0d |  | 360h |
| 108 | 1.3.3.1 | Structure core modules & source code common |  | 3d | 2016-03-03 | 2016-03-07 | 103 | 8d | 0d | DevTeam | 24h |
| 109 | 1.3.3.2 | **Client User Module** |  | 10d | 2016-03-08 | 2016-03-21 | 108, 105, 102 | 8d | 5d |  | 176h |
| 110 | 1.3.3.2.1 | Home Page Module |  | 3d | 2016-03-08 | 2016-03-10 |  | 10d | 0d | DuongDT | 24h |
| 111 | 1.3.3.2.2 | Login/ Logout Module |  | 2d | 2016-03-11 | 2016-03-14 | 110 | 10d | 0d | DuongDT | 16h |
| 112 | 1.3.3.2.3 | **Project module** |  | 8d | 2016-03-08 | 2016-03-17 |  | 8d | 0d |  | 64h |
| 113 | 1.3.3.2.3.1 | Create/manage a project Module |  | 5d | 2016-03-08 | 2016-03-14 |  | 8d | 0d |  | 40h |
| 114 | 1.3.3.2.3.2 | View/Back a project Module |  | 3d | 2016-03-15 | 2016-03-17 | 113 | 8d |  |  | 24h |
| 115 | 1.3.3.2.4 | User Personal Page Module |  | 3d | 2016-03-08 | 2016-03-10 |  | 9d | 0d |  | 24h |
| 116 | 1.3.3.2.5 | Search Module |  | 2d | 2016-03-18 | 2016-03-21 | 112 | 8d | 0d |  | 16h |
| 117 | 1.3.3.2.6 | Message Module |  | 4d | 2016-03-11 | 2016-03-16 | 115 | 9d | 0d |  | 32h |
| 118 | 1.3.3.3 | **Admin Module** |  | 10d | 2016-03-15 | 2016-03-28 | 108, 105, 102 | 8d | 0d |  | 160h |
| 119 | 1.3.3.3.1 | Login/ Logout module |  | 2d | 2016-03-15 | 2016-03-16 | 111 | 10d | 0d | DuongDT | 16h |
| 120 | 1.3.3.3.2 | Manage Users Module |  | 4d | 2016-03-17 | 2016-03-22 | 117 | 9d | 0d |  | 32h |
| 121 | 1.3.3.3.3 | Manage Projects Module |  | 5d | 2016-03-22 | 2016-03-28 | 116 | 8d |  |  | 40h |
| 122 | 1.3.3.3.4 | Manage Backings Module |  | 3d | 2016-03-17 | 2016-03-21 | 119 | 10d | 0d | DuongDT | 24h |
| 123 | 1.3.3.3.5 | Manage Categories Module |  | 3d | 2016-03-22 | 2016-03-24 | 122 | 10d |  | DuongDT | 24h |
| 124 | 1.3.3.3.6 | Mangage Silder Module |  | 3d | 2016-03-23 | 2016-03-25 | 120 | 9d |  |  | 24h |
| 125 | 1.3.3.4 | Complete Coding | milestone | 0d | 2016-03-28 | 2016-03-28 | 109, 118 | 8d |  |  |  |
| 126 | 1.3.4 | Create Progress Report 4 |  | 1d? | 2016-03-29 | 2016-03-29 | 105, 107 | 11d | 0d | MaiNTX | 8h |
| 127 | 1.3.5 | Submit Progress Report 4 | milestone | 0d | 2016-03-29 | 2016-03-29 | 126 | 11d |  | MaiNTX |  |
| 128 | 1.3.6 | **Testing** |  | 26d? | 2016-03-03 | 2016-04-07 |  | 0d |  |  | 336h |
| 129 | 1.3.6.1 | **Writing test case (continue)** |  | 10d? | 2016-03-03 | 2016-03-16 | 104 | 0d |  | HiepTQ | 160h |
| 130 | 1.3.6.1.1 | **System test case** |  | 5d? | 2016-03-03 | 2016-03-09 |  | 0d |  |  | 40h |
| 131 | 1.3.6.1.1.1 | Create system test case |  | 3d | 2016-03-03 | 2016-03-07 |  | 0d |  | TestTEAM | 24h |
| 132 | 1.3.6.1.1.2 | Review system test case |  | 1d? | 2016-03-08 | 2016-03-08 | 131 | 0d |  | HiepTQ | 8h |
| 133 | 1.3.6.1.1.3 | Update system test case |  | 1d? | 2016-03-09 | 2016-03-09 | 132 | 0d |  | TestTEAM | 8h |

| ID | WBS | Task | Type | Duration | Start | Finish | Predecessors | Total slack | Resources | Work |
| --- | --- | --- | --- | --- | --- | --- | --- | --- | --- | --- |
| 134 | 1.3.6.1.2 | **Integration test case** |  | 5d? | 2016-03-10 | 2016-03-16 | 130 | 0d |  | 40h |
| 135 | 1.3.6.1.2.1 | Create integration test case |  | 3d | 2016-03-10 | 2016-03-14 |  | 0d | TestTEAM | 24h |
| 136 | 1.3.6.1.2.2 | Review integration test case |  | 1d? | 2016-03-15 | 2016-03-15 | 135 | 0d | HiepTQ | 8h |
| 137 | 1.3.6.1.2.3 | Update integration test case |  | 1d? | 2016-03-16 | 2016-03-16 | 136 | 0d | TestTEAM | 8h |
| 138 | 1.3.6.1.3 | Writing test case complete | milestone | 0d | 2016-03-16 | 2016-03-16 | 134 | 0d |  |  |
| 139 | 1.3.6.2 | **Execute Test Round 1** |  | 8d | 2016-03-17 | 2016-03-28 | 129 | 0d |  | 80h |
| 140 | 1.3.6.2.1 | Execute Integration Test |  | 3d | 2016-03-17 | 2016-03-21 |  | 0d | TestTEAM | 24h |
| 141 | 1.3.6.2.2 | Fix bug Integration Test |  | 2d | 2016-03-22 | 2016-03-23 | 140 | 10d | DevTeam | 16h |
| 142 | 1.3.6.2.3 | Execute System Test |  | 3d | 2016-03-22 | 2016-03-24 | 140 | 0d | TestTEAM | 24h |
| 143 | 1.3.6.2.4 | Fix bug System Test |  | 2d | 2016-03-25 | 2016-03-28 | 142 | 7d | DevTeam | 16h |
| 144 | 1.3.6.3 | Update Test Case |  | 1d | 2016-03-25 | 2016-03-25 | 142 | 0d | TestTEAM | 8h |
| 145 | 1.3.6.4 | **Execute Test Round 2** |  | 8d | 2016-03-28 | 2016-04-06 | 144 | 0d |  | 80h |
| 146 | 1.3.6.4.1 | Execute Integration Test |  | 3d | 2016-03-28 | 2016-03-30 |  | 0d | TestTEAM | 24h |
| 147 | 1.3.6.4.2 | Fix bug Integration Test |  | 2d | 2016-03-31 | 2016-04-01 | 146 | 3d | DevTeam | 16h |
| 148 | 1.3.6.4.3 | Execute System Test |  | 3d | 2016-03-31 | 2016-04-04 | 146 | 0d | TestTEAM | 24h |
| 149 | 1.3.6.4.4 | Fix bug System Test |  | 2d | 2016-04-05 | 2016-04-06 | 148 | 0d | DevTeam | 16h |
| 150 | 1.3.6.5 | Create Test Report |  | 1d | 2016-04-07 | 2016-04-07 | 139, 145 | 0d | HiepTQ | 8h |
| 151 | 1.3.6.6 | Testing Complete | milestone | 0d | 2016-04-07 | 2016-04-07 | 150 | 0d |  |  |
| 152 | 1.3.7 | **Quality Control** |  | 3d | 2016-04-08 | 2016-04-12 | 128, 107 | 0d |  | 24h |
| 153 | 1.3.7.1 | Create Quality Report |  | 2d | 2016-04-08 | 2016-04-11 |  | 0d | HiepTQ | 16h |
| 154 | 1.3.7.2 | Review Quality Report |  | 0.5d | 2016-04-12 | 2016-04-12 | 153 | 0d | DuongDT | 4h |
| 155 | 1.3.7.3 | Update Quality Report |  | 0.5d | 2016-04-12 | 2016-04-12 | 154 | 0d | HiepTQ | 4h |
| 156 | 1.3.8 | Create Progress Report 5 |  | 1d? | 2016-04-13 | 2016-04-13 | 152 | 0d | MaiNTX | 8h |
| 157 | 1.3.9 | Submit Progress Report 5 | milestone | 0d | 2016-04-13 | 2016-04-13 | 156 | 0d | MaiNTX |  |

| ID | WBS | Task | Type | Duration | Start | Finish | Predecessors | Total slack | Resources | Work |
| --- | --- | --- | --- | --- | --- | --- | --- | --- | --- | --- |
| 158 | 1.4 | **Termination** |  | 11d | 2016-04-14 | 2016-04-28 | 101 | 0d |  | 184h |
| 159 | 1.4.1 | Create lesson learned |  | 1d | 2016-04-14 | 2016-04-14 |  | 0d | TEAM | 8h |
| 160 | 1.4.2 | **Final Report Document** |  | 2d | 2016-04-15 | 2016-04-18 | 159 | 0d |  | 112h |
| 161 | 1.4.2.1 | Create Final Report document |  | 2d | 2016-04-15 | 2016-04-18 |  | 0d | DuongDT | 16h |
| 162 | 1.4.2.2 | Create Installing Guide |  | 2d | 2016-04-15 | 2016-04-18 |  | 0d |  | 32h |
| 163 | 1.4.2.3 | Create User Guideline |  | 2d | 2016-04-15 | 2016-04-18 |  | 0d | PhuocNH; MaiNTX | 32h |
| 164 | 1.4.2.4 | Create Project Result Assessment |  | 2d | 2016-04-15 | 2016-04-18 |  | 0d | HiepTQ | 16h |
| 165 | 1.4.2.5 | Create Slides for Final Presentation |  | 2d | 2016-04-15 | 2016-04-18 |  | 0d | TEAM | 16h |
| 166 | 1.4.3 | Submit all Final Documents and Source codes | milestone | 0d | 2016-04-18 | 2016-04-18 | 160 | 8d | PhuocNH |  |
| 167 | 1.4.4 | **Pre-closing** |  | 5d | 2016-04-19 | 2016-04-25 |  | 0d |  | 40h |
| 168 | 1.4.4.1 | Trainning presentation |  | 5d | 2016-04-19 | 2016-04-25 | 160 | 0d | TEAM | 40h |
| 169 | 1.4.5 | **Closing** |  | 3d | 2016-04-26 | 2016-04-28 | 168 | 0d |  | 24h |
| 170 | 1.4.5.1 | Presentation for Capstone Project |  | 3d | 2016-04-26 | 2016-04-28 |  | 0d | TEAM | 24h |
| 171 | 1.4.5.2 | Complete Project | milestone | 0d | 2016-04-28 | 2016-04-28 | 170 | 0d |  |  |
